# gantt

Schedule from MS Project, 2025-05-27 to 2025-07-11, A marks actual dates.

## Calendars

- Estándar: Mon-Fri 09:00-13:00, 15:00-19:00; Sat-Sun off.

## Schedule

| ID | WBS | Task | Type | Duration | Start | Finish | Predecessors | Complete | Remaining | Total slack | Free slack |
| --- | --- | --- | --- | --- | --- | --- | --- | --- | --- | --- | --- |
| 1 | 1 | **Diplomas y Certificados v1** |  | 29d | 2025-06-03 A | 2025-07-11 |  | 5% | 27.65d |  |  |
| 2 | 1.1 | **Panel de usuario** |  | 8d | 2025-06-03 A | 2025-06-12 |  | 17% | 6.65d | 0d |  |
| 3 | 1.1.1 | Acceso de Usuario |  | 1d | 2025-06-03 A | 2025-06-03 |  | 20% | 0.8d | 0.1d | 0d |
| 4 | 1.1.2 | Home |  | 1d | 2025-06-04 A | 2025-06-04 | 3 | 10% | 0.9d | 0.2d | 0d |
| 5 | 1.1.3 | Mis cursos |  | 2d | 2025-06-05 A | 2025-06-06 | 4 | 10% | 1.8d | 0.75d | 0d |
| 6 | 1.1.4 | Ver certificado |  | 3d | 2025-06-09 A | 2025-06-11 | 5 | 25% | 2.25d | 0.1d | 0d |
| 7 | 1.1.5 | Perfil |  | 1d | 2025-06-12 A | 2025-06-12 | 6 | 10% | 0.9d | 0d |  |
| 8 | 1.2 | **Panel de administrador** |  | 14d | 2025-06-13 | 2025-07-02 |  |  |  | 0d |  |
| 9 | 1.2.1 | Acceso de Administrador |  | 1d | 2025-06-13 | 2025-06-13 | 7 |  |  | 0d |  |
| 10 | 1.2.2 | Home |  | 1d | 2025-06-16 | 2025-06-16 | 9 |  |  | 0d |  |
| 11 | 1.2.3 | Mantenimiento de cursos |  | 2d | 2025-06-17 | 2025-06-18 | 10 |  |  | 0d |  |
| 12 | 1.2.4 | Mantenimiento de categorias |  | 2d | 2025-06-19 | 2025-06-20 | 11 |  |  | 0d |  |
| 13 | 1.2.5 | Mantenimiento de instructores |  | 2d | 2025-06-23 | 2025-06-24 | 12 |  |  | 0d |  |
| 14 | 1.2.6 | Mantenimiento de usuarios |  | 2d | 2025-06-25 | 2025-06-26 | 13 |  |  | 0d |  |
| 15 | 1.2.7 | Detalle de certificados |  | 3d | 2025-06-27 | 2025-07-01 | 14 |  |  | 0d |  |
| 16 | 1.2.8 | Perfil |  | 1d | 2025-07-02 | 2025-07-02 | 15 |  |  | 0d |  |
| 17 | 1.3 | **Pruebas** |  | 7d | 2025-07-03 | 2025-07-11 |  |  |  | 0d |  |
| 18 | 1.3.1 | Pruebas con el cliente |  | 5d | 2025-07-03 | 2025-07-09 | 16 |  |  | 0d |  |
| 19 | 1.3.2 | Corrección y observaciones |  | 2d | 2025-07-10 | 2025-07-11 | 18 |  |  | 0d |  |
| 20 | 2 | Diplomas y Certificados v2 | inactive, manual | 1d? | 2025-05-27 | 2025-05-27 |  |  |  |  |  |
